# 中联马来园区DCOM平台项目

Schedule from a web Gantt chart, 2025-12-30 to 2026-10-30.
Every day is a working day

## Schedule

| ID | WBS | Task | Type | Duration | Start | Finish | Predecessors | inPeople | Status |
| --- | --- | --- | --- | --- | --- | --- | --- | --- | --- |
| 2 | 1 | DCOM系统合同签订 | fixed start | 12d | 2026-01-01 | 2026-01-12 |  | 张意&杨玉 |  |
| 3 | 2 | 项目立项启动及启动会议 |  | 2d | 2026-01-13 | 2026-01-14 | 2 | 赵红光 | waiting |
| 4 | 3 | DCOM系统硬件设备采购 |  | 20d | 2026-01-19 | 2026-02-07 | 2 | 张意&杨玉 | waiting |
| 5 | 4 | 硬件设备发货及海运报关 |  | 30d | 2026-02-08 | 2026-03-09 | 4 | 张意&杨玉 | waiting |
| 6 | 5 | 园区网络施工及设备安装 |  | 7d | 2026-03-10 | 2026-03-16 | 5 | 熊瀛 | waiting |
| 7 | 6 | 园区网络及设备调试 |  | 5d | 2026-03-17 | 2026-03-21 | 6 | 赵红光&熊瀛 | waiting |
| 8 | 7 | DCOM平台环境部署 |  | 5d | 2026-03-22 | 2026-03-26 | 7 | 谢水根&朱星 | waiting |
| 9 | 8 | 机房楼系统交付（1#楼） |  | 1d | 2026-01-30 | 2026-01-30 |  | 李冲（项目经理） |  |
| 10 | 9 | 机房楼系统交付（2#楼） |  | 1d | 2025-12-30 | 2025-12-30 |  | 郝辉（项目经理） |  |
| 11 | 10 | 机房楼系统交付（3#楼） |  | 1d | 2025-12-30 | 2025-12-30 |  | 待定 |  |
| 12 | 11 | 机房楼系统交付（4#楼） |  | 1d | 2025-12-30 | 2025-12-30 |  | 待定 |  |
| 13 | 12 | DCOM平台南向数据接入（1#楼） |  | 7d | 2026-03-27 | 2026-04-02 | 8 | 赵红光&熊瀛 | waiting |
| 14 | 13 | DCOM平台南向数据接入（2#楼） |  | 1d | 2025-12-30 | 2025-12-30 |  | 赵红光&熊瀛 |  |
| 15 | 14 | DCOM平台南向数据接入（3#楼） |  | 1d | 2025-12-30 | 2025-12-30 |  |  |  |
| 16 | 15 | DCOM平台南向数据接入（4#楼） |  | 1d | 2025-12-30 | 2025-12-30 |  |  |  |
| 17 | 16 | DCOM平台数据上线（1#楼） |  | 10d | 2026-04-03 | 2026-04-12 | 13 | 赵红光&熊瀛 | waiting |
| 18 | 17 | DCOM平台数据上线（2#楼） |  | 1d | 2025-12-30 | 2025-12-30 |  | 赵红光&熊瀛 |  |
| 19 | 18 | DCOM平台数据上线（3#楼） |  | 1d | 2025-12-30 | 2025-12-30 |  |  |  |
| 20 | 19 | DCOM平台数据上线（4#楼） |  | 1d | 2025-12-30 | 2025-12-30 |  |  |  |
| 21 | 20 | DCOM北向数据上传（1#楼） |  | 20d | 2026-04-03 | 2026-04-22 | 13 | 赵红光&熊瀛 | waiting |
| 22 | 21 | DCOM北向数据上传（2#楼） |  | 1d | 2025-12-30 | 2025-12-30 |  | 赵红光&熊瀛 |  |
| 23 | 22 | DCOM北向数据上传（3#楼） |  | 1d | 2025-12-30 | 2025-12-30 |  |  |  |
| 24 | 23 | DCOM北向数据上传（4#楼） |  | 1d | 2025-12-30 | 2025-12-30 |  |  |  |
| 25 | 24 | DCOM平台北向数据验收（1#楼） |  | 5d | 2026-04-23 | 2026-04-27 | 21 | 赵红光&熊瀛 | waiting |
| 26 | 25 | DCOM平台北向数据验收（2#楼） |  | 1d | 2026-05-28 | 2026-05-28 |  |  |  |
| 27 | 26 | DCOM平台监控功能上线 |  | 1d | 2026-04-13 | 2026-04-13 | 17 | 赵红光&谢水根 | waiting |
| 28 | 27 | DCOM平台运维功能开发 | fixed start | 249d | 2026-02-24 | 2026-10-30 |  | 赵红光&谢水根 |  |
| 29 | 28 | DCOM平台功能阶段性交付（1阶段） | fixed end | 127d | 2026-02-24 | 2026-06-30 |  | 赵红光&谢水根 |  |
| 30 | 29 | DCOM平台功能阶段性交付（2阶段） | fixed end | 63d | 2026-06-30 | 2026-08-31 |  | 赵红光&谢水根 |  |
| 31 | 30 | DCOM平台功能阶段性交付（3阶段） | fixed end | 60d | 2026-09-01 | 2026-10-30 |  | 赵红光&谢水根 |  |
| 32 | 31 | DCOM平台验收测试 |  | 5d | 2026-10-26 | 2026-10-30 |  | 赵红光&谢水根 |  |
| 33 | 32 | DCOM平台培训及验收 |  | 5d | 2026-10-26 | 2026-10-30 |  | 赵红光&谢水根 |  |

Notes:
- 2: 商务跟进
- 3: 完成内部项目立项并组织启动会议，项目正式启动
- 4: 商务跟进
- 5: 商务跟进
- 9: 预计2026/1/30交付
- 13: 按机房楼系统交付（1#楼）后T+7天考虑
- 14: 按机房楼系统交付（2#楼）后T+7天考虑
- 17: DCOM平台南向数据接入（1#楼）后T+10天考虑
- 18: DCOM平台南向数据接入（1#楼）后T+10天考虑
- 21: 按DCOM平台南向数据接入（1#楼）完成T+20天计划，完成北向数据上传的配置及数据推送，数据核对和相关测试
- 22: 按DCOM平台南向数据接入（2#楼）完成T+20天计划，完成北向数据上传的配置及数据推送，数据核对和相关测试
- 25: 按数据北向推送后T+5天计划，完成北向数据治理及数据验收
- 27: 按每栋机房楼数据上线T+5天上线计划，基础监控功能含界面，告警，数据，报表，能耗，容量
- 28: 详见开发任务进度计划表
- 29: 运维功能涉及开发的部分，预计按照3~5个迭代过程分批交付
- 32: 后期根据实际情况协商安排
- 33: 后期根据实际情况协商安排
